# UTN BA - Proyecto Final 2014 - G422 - Gantt del proyecto

Schedule from MS Project, 2014-04-12 to 2014-11-20, A marks actual dates.

## Calendars

- Calendario PF: Mon-Sun 09:00-13:00, 15:00-19:00.

## Resources

| Resource |
| --- |
| Joaquin O Ibar |
| Lucas Sagaria |
| Gonzalo García Córdoba |
| Iván Franco |
| Ignacio J. Abad |

## Schedule

| ID | WBS | Task | Duration | Start | Finish | Predecessors | Complete | Remaining | Baseline start | Baseline finish | Baseline duration | Total slack | Constraint | Resources | Work | Actual work |
| --- | --- | --- | --- | --- | --- | --- | --- | --- | --- | --- | --- | --- | --- | --- | --- | --- |
| 1 | 1 | **Sistema de información, alerta y prevención de accidentes en los centros de esquí (White Powder)** | 223d | 2014-04-12 A | 2014-11-20 |  | 42% | 128.62d | 2014-04-10 | 2014-11-26 | 230.38d | 0d |  |  | 1074.25h | 488.75h |
| 2 | 1.1 | **Documentación de Gestión del Proyecto** | 55d | 2014-04-12 A | 2014-06-05 A |  | 100% |  | 2014-04-10 | 2014-06-05 | 57d |  |  |  | 443.5h | 443.5h |
| 3 | 1.1.1 | **Acta de Proyecto** | 50d | 2014-04-12 A | 2014-05-31 A |  | 100% |  | 2014-04-12 | 2014-06-05 | 55d |  |  |  | 131h | 131h |
| 4 | 1.1.1.1 | Elaboración del documento | 82h | 2014-04-12 A | 2014-05-22 A |  | 100% |  | 2014-04-12 | 2014-05-22 | 82h |  | finish no earlier than 2014-05-22 | Lucas Sagaria [50%] | 94h | 94h |
| 5 | 1.1.1.2 | Revisión del documento | 14h | 2014-05-23 A | 2014-05-29 A | 4 | 100% |  | 2014-05-23 | 2014-05-29 | 14h |  | finish no earlier than 2014-05-29 | Gonzalo García Córdoba | 33h | 33h |
| 6 | 1.1.1.3 | Validación y correcciones | 4h | 2014-05-30 A | 2014-05-31 A | 5 | 100% |  | 2014-05-30 | 2014-06-05 | 14h |  | finish no earlier than 2014-05-31 | Ignacio J. Abad [25%] | 4h | 4h |
| 7 | 1.1.2 | **Documento de WBS** | 28d | 2014-04-25 A | 2014-05-22 A |  | 100% |  | 2014-04-18 | 2014-05-22 | 35d |  |  |  | 42.5h | 42.5h |
| 8 | 1.1.2.1 | Elaboración del documento | 29h | 2014-04-25 A | 2014-05-08 A |  | 100% |  | 2014-04-18 | 2014-05-08 | 10h |  | start no earlier than 2014-04-25 | Lucas Sagaria [50%] | 14.5h | 14.5h |
| 9 | 1.1.2.2 | Revisión del documento | 14h | 2014-05-09 A | 2014-05-15 A | 8 | 100% |  | 2014-05-09 | 2014-05-15 | 14h |  | finish no earlier than 2014-05-15 | Ignacio J. Abad | 14h | 14h |
| 10 | 1.1.2.3 | Validación y correcciones | 14h | 2014-05-16 A | 2014-05-22 A | 9 | 100% |  | 2014-05-16 | 2014-05-22 | 14h |  | finish no earlier than 2014-05-22 | Joaquin O Ibar | 14h | 14h |
| 11 | 1.1.3 | **Matriz de Roles y Responsabilidades** | 28d | 2014-04-25 A | 2014-05-22 A |  | 100% |  | 2014-04-10 | 2014-05-11 | 256h? |  |  |  | 56h | 56h |
| 12 | 1.1.3.1 | Elaboración del documento | 28h | 2014-04-25 A | 2014-05-08 A |  | 100% |  | 2014-04-10 | 2014-04-13 | 26h? |  | finish no earlier than 2014-05-08 | Iván Franco | 28h | 28h |
| 13 | 1.1.3.2 | Revisión del documento | 14h | 2014-05-09 A | 2014-05-15 A | 12 | 100% |  | 2014-04-10 | 2014-04-16 | 50h? |  | finish no earlier than 2014-05-15 | Joaquin O Ibar | 14h | 14h |
| 14 | 1.1.3.3 | Validación y correcciones | 14h | 2014-05-16 A | 2014-05-22 A | 13 | 100% |  | 2014-04-10 | 2014-04-10 | 8h? |  | finish no earlier than 2014-05-22 | Ignacio J. Abad | 14h | 14h |
| 15 | 1.1.4 | **Matriz de habilidades y competencias** | 34.88d | 2014-04-25 A | 2014-05-29 A |  | 100% |  | 2014-04-10 | 2014-04-18 | 8.25d |  |  |  | 56h | 56h |
| 16 | 1.1.4.1 | Elaboración del documento | 28h | 2014-04-25 A | 2014-05-08 A |  | 100% |  | 2014-04-10 | 2014-04-12 | 18h |  | finish no earlier than 2014-05-08 | Ignacio J. Abad [50%] | 28h | 28h |
| 17 | 1.1.4.2 | Revisión del documento | 14h | 2014-05-09 A | 2014-05-15 A | 16 | 100% |  | 2014-04-10 | 2014-04-10 | 3h |  | finish no earlier than 2014-05-15 | Gonzalo García Córdoba | 14h | 14h |
| 18 | 1.1.4.3 | Validación y correcciones | 14h | 2014-05-23 A | 2014-05-29 A | 17 | 100% |  | 2014-04-10 | 2014-04-10 | 3h |  | finish no earlier than 2014-05-29 | Iván Franco | 14h | 14h |
| 19 | 1.1.5 | **Análisis de Riesgos** | 27.25d | 2014-04-25 A | 2014-05-22 A |  | 100% |  | 2014-04-10 | 2014-04-23 | 13.25d |  |  |  | 56h | 56h |
| 20 | 1.1.5.1 | Elaboración del documento | 106h | 2014-04-25 A | 2014-05-08 A |  | 100% |  | 2014-04-10 | 2014-04-14 | 34h |  | finish no earlier than 2014-05-15 | Gonzalo García Córdoba | 28h | 28h |
| 21 | 1.1.5.2 | Revisión del documento | 50h | 2014-05-09 A | 2014-05-15 A | 20 | 100% |  | 2014-04-10 | 2014-04-11 | 10h |  | finish no earlier than 2014-05-22 | Iván Franco | 14h | 14h |
| 22 | 1.1.5.3 | Validación y correcciones | 50h | 2014-05-16 A | 2014-05-22 A | 21 | 100% |  | 2014-04-10 | 2014-04-11 | 10h |  | finish no earlier than 2014-05-29 | Ignacio J. Abad | 14h | 14h |
| 23 | 1.1.6 | **Matriz de Comunicaciones** | 27.88d | 2014-04-25 A | 2014-05-22 A |  | 100% |  | 2014-04-10 | 2014-04-25 | 15.25d |  | finish no later than 2014-05-22 |  | 42h | 42h |
| 24 | 1.1.6.1 | Elaboración del documento | 28h | 2014-04-25 A | 2014-05-08 A |  | 100% |  | 2014-04-10 | 2014-04-13 | 26h |  | finish no earlier than 2014-05-08 | Ignacio J. Abad [50%] | 14h | 14h |
| 25 | 1.1.6.2 | Revisión del documento | 14h | 2014-05-09 A | 2014-05-15 A | 24 | 100% |  | 2014-04-10 | 2014-04-11 | 10h |  | start no earlier than 2014-05-09 | Gonzalo García Córdoba | 14h | 14h |
| 26 | 1.1.6.3 | Validación y correcciones | 14h | 2014-05-16 A | 2014-05-22 A | 25 | 100% |  | 2014-04-10 | 2014-04-11 | 10h |  | finish no earlier than 2014-05-22 | Iván Franco | 14h | 14h |

| ID | WBS | Task | Duration | Start | Finish | Predecessors | Complete | Remaining | Baseline start | Baseline finish | Baseline duration | Total slack | Free slack | Constraint | Resources | Work | Actual work |
| --- | --- | --- | --- | --- | --- | --- | --- | --- | --- | --- | --- | --- | --- | --- | --- | --- | --- |
| 27 | 1.1.7 | **GANTT del proyecto** | 21d | 2014-05-16 A | 2014-06-05 A |  | 100% |  | 2014-04-10 | 2014-04-30 | 21d |  |  |  |  | 35h | 35h |
| 28 | 1.1.7.1 | Elaboración del documento | 14h | 2014-05-16 A | 2014-05-22 A | 8 | 100% |  | 2014-04-10 | 2014-04-16 | 50h |  |  | finish no earlier than 2014-05-22 | Lucas Sagaria [50%] | 7h | 7h |
| 29 | 1.1.7.2 | Revisión del documento | 14h | 2014-05-23 A | 2014-05-29 A | 28 | 100% |  | 2014-04-10 | 2014-04-16 | 50h |  |  | start no earlier than 2014-05-23 | Ignacio J. Abad | 14h | 14h |
| 30 | 1.1.7.3 | Validación y correcciones | 14h | 2014-05-30 A | 2014-06-05 A | 29, 7 | 100% |  | 2014-04-10 | 2014-04-16 | 50h |  |  | finish no earlier than 2014-06-05 | Joaquin O Ibar | 14h | 14h |
| 31 | 1.1.8 | **Análisis de factibilidad técnica y operativa** | 18d | 2014-05-15 A | 2014-06-02 A |  | 100% |  | 2014-04-10 | 2014-04-25 | 15.25d |  |  |  |  | 25h | 25h |
| 32 | 1.1.8.1 | Elaboración del documento | 15h | 2014-05-15 A | 2014-05-22 A | 21 | 100% |  | 2014-04-10 | 2014-04-13 | 26h |  |  | finish no earlier than 2014-05-22 | Lucas Sagaria [50%] | 7.5h | 7.5h |
| 33 | 1.1.8.2 | Revisión del documento | 14h | 2014-05-23 A | 2014-05-29 A | 32 | 100% |  | 2014-04-10 | 2014-04-11 | 10h |  |  | finish no earlier than 2014-05-29 | Iván Franco | 14h | 14h |
| 34 | 1.1.8.3 | Validación y correcciones | 7h | 2014-05-30 A | 2014-06-02 A | 33 | 100% |  | 2014-04-10 | 2014-04-11 | 10h |  |  | finish no earlier than 2014-06-01 | Iván Franco [50%] | 3.5h | 3.5h |
| 35 | 1.2 | **Documentación de Análisis** | 27.88d | 2014-05-30 A | 2014-06-26 |  | 34% | 18.35d | 2014-04-13 | 2014-06-08 | 56.12d | 135.38d | 0.12d |  |  | 125.75h | 45.25h |
| 36 | 1.2.1 | **Documento de requerimientos de negocio** | 20.88d | 2014-05-30 A | 2014-06-19 |  | 50% | 10.44d | 2014-05-18 | 2014-06-04 | 17d | 142.38d |  |  |  | 30h | 19.5h |
| 37 | 1.2.1.1 | Elaboración del documento | 14h | 2014-05-30 A | 2014-06-05 A |  | 100% |  | 2014-05-18 | 2014-05-23 | 10h |  |  | finish no earlier than 2014-06-05 | Lucas Sagaria | 16h | 16h |
| 38 | 1.2.1.2 | Revisión del documento | 14h | 2014-06-06 A | 2014-06-12 | 37 | 50% | 7h | 2014-05-29 | 2014-05-30 | 2h | 142.38d | 0.12d | finish no earlier than 2014-06-12 | Joaquin O Ibar [50%] | 7h | 3.5h |
| 39 | 1.2.1.3 | Validación y correcciones | 14h | 2014-06-13 | 2014-06-19 | 38 |  |  | 2014-06-01 | 2014-06-04 | 6h | 142.38d |  | finish no earlier than 2014-06-19 | Ignacio J. Abad [50%] | 7h |  |
| 40 | 1.2.2 | **Matriz de trazabilidad entre requerimientos y casos de uso** | 20.88d | 2014-06-06 A | 2014-06-26 | 37, 46 | 17% | 17.4d | 2014-04-24 | 2014-06-08 | 45.12d | 135.38d |  |  |  | 21h | 3.5h |
| 41 | 1.2.2.1 | Elaboración del documento | 14h | 2014-06-06 A | 2014-06-12 |  | 50% | 7h | 2014-04-24 | 2014-04-27 | 8h | 135.38d | 0.12d | finish no earlier than 2014-06-12 | Joaquin O Ibar [50%] | 7h | 3.5h |
| 42 | 1.2.2.2 | Revisión del documento | 14h | 2014-06-13 | 2014-06-19 | 41 |  |  | 2014-05-04 | 2014-05-04 | 2h | 135.38d | 0.12d | finish no earlier than 2014-06-19 | Iván Franco [50%] | 7h |  |
| 43 | 1.2.2.3 | Validación y correcciones | 14h | 2014-06-20 | 2014-06-26 | 42 |  |  | 2014-06-06 | 2014-06-08 | 4h | 135.38d |  | finish no earlier than 2014-06-26 | Ignacio J. Abad [50%] | 7h |  |
| 44 | 1.2.3 | **Documentos de casos de uso** | 19d | 2014-06-01 A | 2014-06-19 |  | 45% | 10.5d | 2014-04-13 | 2014-05-29 | 46.12d | 142.38d |  |  |  | 53.75h | 18.75h |
| 45 | 1.2.3.1 | **Diagramas de casos de uso** | 19d | 2014-06-01 A | 2014-06-19 |  | 45% | 10.5d | 2014-04-14 | 2014-05-15 | 31.25d | 142.38d |  |  |  | 27.75h | 10.25h |
| 46 | 1.2.3.1.1 | Elaboración del documento | 10h | 2014-06-01 A | 2014-06-05 A |  | 100% |  | 2014-04-14 | 2014-05-07 | 32h |  |  | finish no earlier than 2014-06-05 | Ignacio J. Abad [50%] | 6.75h | 6.75h |
| 47 | 1.2.3.1.2 | Revisión del documento | 14h | 2014-06-06 A | 2014-06-12 | 46 | 50% | 7h | 2014-05-08 | 2014-05-11 | 8h | 142.38d | 0.12d | finish no earlier than 2014-06-12 | Iván Franco [50%] | 7h | 3.5h |
| 48 | 1.2.3.1.3 | Validación y correcciones | 14h | 2014-06-13 | 2014-06-19 | 47 |  |  | 2014-05-12 | 2014-05-15 | 8h | 142.38d |  | finish no earlier than 2014-06-19 | Lucas Sagaria [50%]; Joaquin O Ibar [50%] | 14h |  |
| 49 | 1.2.3.2 | **Especificación de casos de uso** | 19d | 2014-06-01 A | 2014-06-19 |  | 45% | 10.5d | 2014-04-13 | 2014-05-29 | 46.12d | 142.38d |  |  |  | 26h | 8.5h |
| 50 | 1.2.3.2.1 | Elaboración del documento | 10h | 2014-06-01 A | 2014-06-05 A |  | 100% |  | 2014-04-13 | 2014-05-18 | 55h |  |  | finish no earlier than 2014-06-05 | Ignacio J. Abad [50%] | 5h | 5h |
| 51 | 1.2.3.2.2 | Revisión del documento | 14h | 2014-06-06 A | 2014-06-12 | 50 | 50% | 7h | 2014-05-18 | 2014-05-22 | 8h | 142.38d | 0.12d | finish no earlier than 2014-06-12 | Iván Franco [50%] | 7h | 3.5h |
| 52 | 1.2.3.2.3 | Validación y correcciones | 14h | 2014-06-13 | 2014-06-19 | 51 |  |  | 2014-05-22 | 2014-05-29 | 14h | 142.38d |  | finish no earlier than 2014-06-19 | Lucas Sagaria [50%]; Joaquin O Ibar [50%] | 14h |  |

| ID | WBS | Task | Duration | Start | Finish | Predecessors | Complete | Remaining | Baseline start | Baseline finish | Baseline duration | Total slack | Free slack | Constraint | Resources | Work | Actual work |
| --- | --- | --- | --- | --- | --- | --- | --- | --- | --- | --- | --- | --- | --- | --- | --- | --- | --- |
| 53 | 1.2.4 | **Diagramas de actividades** | 20.88d | 2014-06-06 A | 2014-06-26 |  | 17% | 17.4d | 2014-05-23 | 2014-06-08 | 16d | 135.38d |  |  |  | 21h | 3.5h |
| 54 | 1.2.4.1 | Elaboración del documento | 14h | 2014-06-06 A | 2014-06-12 | 50 | 50% | 7h | 2014-05-23 | 2014-06-06 | 16h | 135.38d | 0.12d | finish no earlier than 2014-06-12 | Lucas Sagaria [50%] | 7h | 3.5h |
| 55 | 1.2.4.2 | Revisión del documento | 14h | 2014-06-13 | 2014-06-19 | 54 |  |  | 2014-06-06 | 2014-06-07 | 8h | 135.38d | 0.12d | finish no earlier than 2014-06-19 | Ignacio J. Abad [50%] | 7h |  |
| 56 | 1.2.4.3 | Validación y correcciones | 14h | 2014-06-20 | 2014-06-26 | 55 |  |  | 2014-06-07 | 2014-06-08 | 8h | 135.38d |  | finish no earlier than 2014-06-26 | Joaquin O Ibar [50%] | 7h |  |
| 57 | 1.3 | **Documentación de Diseño** | 20.88d | 2014-06-13 | 2014-07-03 |  |  |  | 2014-05-29 | 2014-06-12 | 14d | 6d | 0.12d |  |  | 85h |  |
| 58 | 1.3.1 | **Diagrama Entidad Relación** | 13.88d | 2014-06-13 | 2014-06-26 |  |  |  | 2014-05-29 | 2014-06-10 | 12d | 35d |  |  |  | 14h |  |
| 59 | 1.3.1.1 | Elaboración del documento | 14h | 2014-06-13 | 2014-06-19 |  |  |  | 2014-05-29 | 2014-06-01 | 6h | 140d | 0.75d | start no earlier than 2014-06-13 | Iván Franco [50%] | 7h |  |
| 60 | 1.3.1.2 | Revisión del documento | 8h | 2014-06-20 | 2014-06-23 | 59 |  |  | 2014-06-01 | 2014-06-02 | 2h | 146.38d | 0.12d | finish no earlier than 2014-06-23 | Joaquin O Ibar [50%] | 4h |  |
| 61 | 1.3.1.3 | Validación y corrección | 6h | 2014-06-24 | 2014-06-26 | 60 |  |  | 2014-06-08 | 2014-06-10 | 4h | 146.38d |  | finish no earlier than 2014-06-26 | Ignacio J. Abad [50%] | 3h |  |
| 62 | 1.3.2 | **Diagrama de secuencia** | 17.25d | 2014-06-16 | 2014-07-03 |  |  |  | 2014-05-29 | 2014-06-10 | 12d | 0d |  | finish no later than 2014-07-03 |  | 15h |  |
| 63 | 1.3.2.1 | Elaboración del documento | 8h | 2014-06-16 | 2014-06-19 |  |  |  | 2014-05-29 | 2014-06-01 | 6h | 2.38d |  | finish no earlier than 2014-06-19 | Gonzalo García Córdoba [50%] | 4h |  |
| 64 | 1.3.2.2 | Revisión del documento | 8h | 2014-06-23 | 2014-06-26 | 63 |  |  | 2014-06-06 | 2014-06-07 | 2h | 0d |  | finish no earlier than 2014-06-26 | Lucas Sagaria [50%] | 4h |  |
| 65 | 1.3.2.3 | Validación y corrección | 14h | 2014-06-27 | 2014-07-03 | 64 |  |  | 2014-06-08 | 2014-06-10 | 4h | 0d |  | start no earlier than 2014-06-27 | Ignacio J. Abad [50%] | 7h |  |
| 66 | 1.3.3 | **Estructura de pantallas - Mockup (UI)** | 13.88d | 2014-06-20 | 2014-07-03 |  |  |  | 2014-05-29 | 2014-06-12 | 14d | 34.38d |  |  |  | 14h |  |
| 67 | 1.3.3.1 | Elaboración del documento | 14h | 2014-06-20 | 2014-06-26 |  |  |  | 2014-05-29 | 2014-06-04 | 12h | 139.38d | 0.12d | finish no earlier than 2014-06-26 | Gonzalo García Córdoba [50%] | 7h |  |
| 68 | 1.3.3.2 | Revisión del documento | 8h | 2014-06-27 | 2014-06-30 | 67 |  |  | 2014-06-04 | 2014-06-06 | 4h | 140d | 0.75d | start no earlier than 2014-06-27 | Lucas Sagaria [50%] | 4h |  |
| 69 | 1.3.3.3 | Validación y corrección | 6h | 2014-07-01 | 2014-07-03 | 68 |  |  | 2014-06-08 | 2014-06-12 | 8h | 139.38d |  | finish no earlier than 2014-07-03 | Joaquin O Ibar [50%] | 3h |  |
| 70 | 1.3.4 | **Diagrama de interacción (UX)** | 13.88d | 2014-06-20 | 2014-07-03 |  |  |  | 2014-05-30 | 2014-06-12 | 13d | 0d |  | finish no later than 2014-07-03 |  | 14h |  |
| 71 | 1.3.4.1 | Elaboración del documento | 14h | 2014-06-20 | 2014-06-26 |  |  |  | 2014-05-30 | 2014-06-02 | 6h | 0d |  | finish no earlier than 2014-06-26 | Gonzalo García Córdoba [50%] | 7h |  |
| 72 | 1.3.4.2 | Revisión del documento | 8h | 2014-06-27 | 2014-06-30 | 71 |  |  | 2014-06-07 | 2014-06-08 | 2h | 0d |  | finish no earlier than 2014-06-30 | Lucas Sagaria [50%] | 4h |  |
| 73 | 1.3.4.3 | Validación y corrección | 6h | 2014-07-01 | 2014-07-03 | 72 |  |  | 2014-06-10 | 2014-06-12 | 4h | 0d |  | finish no earlier than 2014-07-03 | Joaquin O Ibar [50%] | 3h |  |
| 74 | 1.3.5 | **Diagrama de despliegue** | 13.88d | 2014-06-13 | 2014-06-26 |  |  |  | 2014-06-01 | 2014-06-09 | 8d | 6.38d |  | finish no later than 2014-07-03 |  | 14h |  |
| 75 | 1.3.5.1 | Elaboración del documento | 14h | 2014-06-13 | 2014-06-19 |  |  |  | 2014-06-01 | 2014-06-05 | 8h | 6.38d | 0.12d | finish no earlier than 2014-06-19 | Gonzalo García Córdoba [50%] | 7h |  |
| 76 | 1.3.5.2 | Revisión del documento | 8h | 2014-06-20 | 2014-06-23 | 75 |  |  | 2014-06-06 | 2014-06-07 | 2h | 6.38d | 0.12d | finish no earlier than 2014-06-23 | Iván Franco [50%] | 4h |  |
| 77 | 1.3.5.3 | Validación y corrección | 6h | 2014-06-24 | 2014-06-26 | 76 |  |  | 2014-06-07 | 2014-06-09 | 4h | 6.38d |  | finish no earlier than 2014-06-26 | Lucas Sagaria [50%] | 3h |  |

| ID | WBS | Task | Duration | Start | Finish | Predecessors | Baseline start | Baseline finish | Baseline duration | Total slack | Free slack | Constraint | Resources | Work |
| --- | --- | --- | --- | --- | --- | --- | --- | --- | --- | --- | --- | --- | --- | --- |
| 78 | 1.3.6 | **Diagrama de clases** | 13.88d | 2014-06-20 | 2014-07-03 |  | 2014-06-02 | 2014-06-10 | 8d | 34.38d |  |  |  | 14h |
| 79 | 1.3.6.1 | Elaboración del documento | 14h | 2014-06-20 | 2014-06-26 | 59 | 2014-06-02 | 2014-06-06 | 8h | 140d | 0.75d | start no earlier than 2014-06-20 | Iván Franco [50%] | 7h |
| 80 | 1.3.6.2 | Revisión del documento | 8h | 2014-06-27 | 2014-06-30 | 79 | 2014-06-07 | 2014-06-08 | 2h | 36.38d | 0.12d | finish no earlier than 2014-06-30 | Joaquin O Ibar [50%] | 4h |
| 81 | 1.3.6.3 | Validación y corrección | 6h | 2014-07-01 | 2014-07-03 | 80 | 2014-06-09 | 2014-06-10 | 2h | 139.38d |  | finish no earlier than 2014-07-03 | Ignacio J. Abad [50%] | 3h |
| 82 | 1.4 | **Construcción del sistema** | 111.88d | 2014-07-04 | 2014-10-23 | 57 | 2014-06-12 | 2014-11-13 | 154.12d | 5.38d |  |  |  | 327.75h |
| 83 | 1.4.1 | **Construcción del primer prototipo** | 48.88d | 2014-07-04 | 2014-08-21 |  | 2014-06-12 | 2014-08-05 | 54.12d | 11.38d | 0.12d |  |  | 115.75h |
| 84 | 1.4.1.1 | **Módulo Registro de usuarios** | 7.25d | 2014-07-04 | 2014-07-11 |  | 2014-07-02 | 2014-07-07 | 5.12d | 35d | 0.75d |  |  | 8h |
| 85 | 1.4.1.1.1 | Registro de usuarios | 10h | 2014-07-04 | 2014-07-08 |  | 2014-07-02 | 2014-07-05 | 6h | 36.38d | 0.12d | finish no earlier than 2014-07-08 | Joaquin O Ibar [50%] | 5h |
| 86 | 1.4.1.1.2 | Reseteo/cambio de contraseña | 6h | 2014-07-09 | 2014-07-11 | 85 | 2014-07-05 | 2014-07-07 | 5h | 37d |  |  | Joaquin O Ibar [50%] | 3h |
| 87 | 1.4.1.2 | **Modulo Login** | 6.88d | 2014-07-12 | 2014-07-18 |  | 2014-07-12 | 2014-07-26 | 14.12d | 34.38d | 23.12d |  |  | 14h |
| 88 | 1.4.1.2.1 | Autenticación de usuarios | 8h | 2014-07-12 | 2014-07-15 | 84 | 2014-07-12 | 2014-07-22 | 14h | 36.38d | 0.12d | finish no earlier than 2014-07-15 | Iván Franco | 8h |
| 89 | 1.4.1.2.2 | Validación de usuarios | 6h | 2014-07-16 | 2014-07-18 | 88 | 2014-07-22 | 2014-07-26 | 8h | 36.38d |  | finish no earlier than 2014-07-18 | Iván Franco | 6h |
| 90 | 1.4.1.3 | **Modulo Información básica** | 10.25d | 2014-07-08 | 2014-07-18 |  | 2014-06-22 | 2014-07-30 | 38d | 31d | 0.75d |  |  | 17h |
| 91 | 1.4.1.3.1 | Ubicación y detalles de las facilidades del centro de esquí | 8h | 2014-07-08 | 2014-07-11 |  | 2014-06-22 | 2014-06-26 | 8h | 98d |  | start no earlier than 2014-07-04 | Ignacio J. Abad [50%] | 4h |
| 92 | 1.4.1.3.2 | Normas de seguridad | 8h | 2014-07-12 | 2014-07-15 |  | 2014-06-28 | 2014-07-02 | 8h | 33.38d |  | finish no earlier than 2014-07-15 | Ignacio J. Abad [50%] | 4h |
| 93 | 1.4.1.3.3 | Señalización en las pistas | 8h | 2014-07-08 | 2014-07-11 |  | 2014-07-08 | 2014-07-11 | 8h | 98d |  | finish no earlier than 2014-07-10 | Ignacio J. Abad [50%] | 4h |
| 94 | 1.4.1.3.4 | Información del clima | 10h | 2014-07-14 | 2014-07-18 |  | 2014-07-15 | 2014-07-30 | 17h | 33d |  | start no earlier than 2014-07-14 | Lucas Sagaria [50%] | 5h |
| 95 | 1.4.1.4 | **Módulo Mi perfil** | 3.25d | 2014-07-19 | 2014-07-22 |  | 2014-07-30 | 2014-08-02 | 3d | 31d | 19.75d |  |  | 8h |
| 96 | 1.4.1.4.1 | Ubicación actual | 8h | 2014-07-19 | 2014-07-22 | 90 | 2014-07-30 | 2014-08-02 | 6h | 33d |  | finish no earlier than 2014-07-07 | Ignacio J. Abad | 8h |
| 97 | 1.4.1.5 | **Modulo Administración** | 30.25d | 2014-07-04 | 2014-08-03 |  | 2014-06-12 | 2014-06-20 | 8d | 12d | 0.75d |  |  | 19h |
| 98 | 1.4.1.5.1 | Edición de información básica del centro de esquí | 6h | 2014-07-23 | 2014-07-25 |  | 2014-06-12 | 2014-06-14 | 4h | 20.38d |  | finish no earlier than 2014-07-25 | Lucas Sagaria [50%] | 3h |
| 99 | 1.4.1.5.2 | ABM de pistas | 16h | 2014-07-27 | 2014-08-03 |  | 2014-06-14 | 2014-06-16 | 5h | 14d |  | start no earlier than 2014-07-27 | Ignacio J. Abad [50%] | 8h |
| 100 | 1.4.1.5.3 | ABM de administradores | 6h | 2014-07-04 | 2014-07-06 |  | 2014-06-17 | 2014-06-18 | 4h | 41.38d |  | finish no earlier than 2014-07-06 | Joaquin O Ibar [50%] | 3h |
| 101 | 1.4.1.5.4 | ABM de rescatistas | 10h | 2014-07-07 | 2014-07-11 |  | 2014-06-19 | 2014-06-20 | 3h | 37d |  | start no earlier than 2014-07-07 | Joaquin O Ibar [50%] | 5h |

| ID | WBS | Task | Duration | Start | Finish | Predecessors | Baseline start | Baseline finish | Baseline duration | Total slack | Free slack | Constraint | Resources | Work |
| --- | --- | --- | --- | --- | --- | --- | --- | --- | --- | --- | --- | --- | --- | --- |
| 102 | 1.4.1.6 | **Módulo Reconocimiento de pista** | 6.88d | 2014-08-04 | 2014-08-10 |  | 2014-06-20 | 2014-06-28 | 8d | 11.38d | 0.12d |  |  | 14h |
| 103 | 1.4.1.6.1 | Grabación de pista | 6h | 2014-08-04 | 2014-08-06 | 97 | 2014-06-20 | 2014-06-22 | 4h | 13.38d | 0.12d | finish no earlier than 2014-08-06 | Iván Franco [50%]; Lucas Sagaria [50%] | 6h |
| 104 | 1.4.1.6.2 | Confirmación de pista | 8h | 2014-08-07 | 2014-08-10 | 103 | 2014-06-26 | 2014-06-28 | 4h | 13.38d |  | finish no earlier than 2014-08-10 | Iván Franco [50%]; Lucas Sagaria [50%] | 8h |
| 105 | 1.4.1.7 | Ejecución de casos de pruebas | 87h | 2014-08-11 | 2014-08-21 | 84, 87, 90, 95, 97, 102 | 2014-07-12 | 2014-07-18 | 14h | 13.38d |  | finish no earlier than 2014-08-21 | Joaquin O Ibar | 22h |
| 106 | 1.4.1.8 | **Informe de ejecución de pruebas** | 10.25d | 2014-08-11 | 2014-08-21 | 84, 87, 90, 95, 97, 102 | 2014-07-19 | 2014-08-05 | 17.25d | 12d |  |  |  | 13.75h |
| 107 | 1.4.1.8.1 | Elaboración del documento | 6h | 2014-08-11 | 2014-08-13 |  | 2014-07-19 | 2014-07-20 | 4h | 13.38d | 0.12d | finish no earlier than 2014-08-13 | Iván Franco [50%] | 3h |
| 108 | 1.4.1.8.2 | Revisión de incidentes de testing | 8h | 2014-08-14 | 2014-08-17 | 107 | 2014-07-21 | 2014-07-21 | 2h | 14d | 0.75d | start no earlier than 2014-08-14 | Ignacio J. Abad [50%] | 4h |
| 109 | 1.4.1.8.3 | Corrección de incidentes de testing | 8h | 2014-08-18 | 2014-08-21 | 108 | 2014-07-22 | 2014-08-05 | 20h | 14d |  | start no earlier than 2014-08-18 | Gonzalo García Córdoba [25%]; Ignacio J. Abad [25%]; Iván Franco [25%]; Lucas Sagaria [25%] | 6.75h |
| 110 | 1.4.2 | **Construcción del segundo prototipo** | 20.88d | 2014-08-22 | 2014-09-11 | 83 | 2014-08-06 | 2014-09-05 | 30.25d | 11.38d | 0.12d |  |  | 59.5h |
| 111 | 1.4.2.1 | **Monitoreo de esquiadores en el centro de esquí** | 8.88d | 2014-08-22 | 2014-08-30 |  | 2014-08-10 | 2014-08-23 | 13.12d | 11.38d | 0.12d |  |  | 32h |
| 112 | 1.4.2.1.1 | Cantidad de esquiadores | 18h | 2014-08-22 | 2014-08-30 |  | 2014-08-10 | 2014-08-14 | 9h | 11.38d |  | finish no earlier than 2014-08-30 | Gonzalo García Córdoba | 18h |
| 113 | 1.4.2.1.2 | Ubicación de esquiadores | 14h | 2014-08-24 | 2014-08-30 |  | 2014-08-14 | 2014-08-18 | 9h | 11.38d |  | finish no earlier than 2014-08-30 | Iván Franco [50%] | 7h |
| 114 | 1.4.2.1.3 | Ubicación de rescatistas | 14h | 2014-08-24 | 2014-08-30 |  | 2014-08-19 | 2014-08-23 | 9h | 12d |  | start no earlier than 2014-08-24 | Iván Franco [50%] | 7h |
| 115 | 1.4.2.2 | Ejecución de casos de pruebas | 8h | 2014-08-31 | 2014-09-03 | 111 | 2014-08-23 | 2014-08-30 | 14h | 19.38d |  | finish no earlier than 2014-09-03 | Ignacio J. Abad [50%] | 4h |
| 116 | 1.4.2.3 | **Informe de ejecución de pruebas** | 11.88d | 2014-08-31 | 2014-09-11 | 111 | 2014-08-30 | 2014-09-05 | 6.12d | 11.38d |  |  |  | 23.5h |
| 117 | 1.4.2.3.1 | Elaboración del documento | 8h | 2014-08-31 | 2014-09-03 |  | 2014-08-30 | 2014-09-01 | 4h | 12d | 0.75d | start no earlier than 2014-08-31 | Iván Franco | 8h |
| 118 | 1.4.2.3.2 | Revisión de incidentes de testing | 8h | 2014-09-05 | 2014-09-08 | 117 | 2014-09-01 | 2014-09-02 | 2h | 63d | 0.75d | start no earlier than 2014-09-04 | Joaquin O Ibar | 8h |
| 119 | 1.4.2.3.3 | Corrección de incidentes de testing | 6h | 2014-09-09 | 2014-09-11 | 118 | 2014-09-02 | 2014-09-05 | 7h | 11.38d |  | finish no earlier than 2014-09-11 | Gonzalo García Córdoba [25%]; Ignacio J. Abad [25%]; Iván Franco [25%]; Joaquin O Ibar [25%]; Lucas Sagaria [25%] | 7.5h |
| 120 | 1.4.3 | **Construcción del tercer prototipo** | 20.25d | 2014-09-12 | 2014-10-02 | 110 | 2014-09-06 | 2014-10-13 | 37.88d | 9.75d | 0.75d |  |  | 80.5h |
| 121 | 1.4.3.1 | **Módulo Mi$Parfil** | 5.25d | 2014-09-16 | 2014-09-21 |  | 2014-09-10 | 2014-10-13 | 33.88d | 20d |  |  |  | 12h |
| 122 | 1.4.3.1.1 | **Estadísticas** | 1.25d | 2014-09-16 | 2014-09-17 |  | 2014-09-10 | 2014-09-29 | 19.25d | 20d | 0.75d |  |  | 4h |
| 123 | 1.4.3.1.1.1 | Vmlocidad máxima alcanzada | 2h | 2014-09-16 | 2014-09-16 |  | 2014-09-10 | 2014-09-17 | 4h | 20.38d |  | finish no earlier than 2014-09-16 | Gonzalo García Córdoba [50%] | 1h |
| 124 | 1.4.3.1.1.2 | Fenocidad promådio | 2h | 2014-09-16 | 2014-09-16 |  | 2014-09-18 | 2014-09-22 | 6h | 20.38d |  | finish no earlier than 2014-09-16 | Gonzalo García Córdoba [50%] | 1h |
| 125 | 1.4.3.1.1.3 | Altura"máxima alcaîzada | 2h | 2014-09-17 | 2014-09-17 |  | 2014-09-23 | 2014-09-24 | 4h | 20d |  | start no earlier than 2014-09-17 | Gonzalo García Córdoba [50%] | 1h |
| 126 | 1.4.3.1.1.4 | Distancia recorrida | 2h | 2014-09-17 | 2014-09-17 |  | 2014-09-25 | 2014-09-29 | 4h | 20d |  | start no earlier than 2014-09-17 | Gonzalo García Córdoba [50%] | 1h |
| 127 | 1.4.3.1.2 | Puesta a cero de estadísticas | 8h | 2014-09-18 | 2014-09-21 | 122 | 2014-10-12 | 2014-10-13 | 4h | 20d |  | start no earlier than 2014-09-16 | Ignacio J. Abad | 8h |

| ID | WBS | Task | Duration | Start | Finish | Predecessors | Baseline start | Baseline finish | Baseline duration | Total slack | Free slack | Constraint | Resources | Work |
| --- | --- | --- | --- | --- | --- | --- | --- | --- | --- | --- | --- | --- | --- | --- |
| 128 | 1.4.3.2 | **Módulo Alertas** | 7.88d | 2014-09-12 | 2014-09-19 |  | 2014-09-06 | 2014-09-30 | 24.25d | 8.38d | 0.12d |  |  | 32h |
| 129 | 1.4.3.2.1 | ABM de alertas | 6h | 2014-09-12 | 2014-09-14 |  | 2014-09-11 | 2014-09-19 | 8h | 13.38d |  | finish no earlier than 2014-09-14 | Gonzalo García Córdoba | 6h |
| 130 | 1.4.3.2.2 | **Envío de alertas monocanal** | 2.88d | 2014-09-12 | 2014-09-14 |  | 2014-09-20 | 2014-09-30 | 10.25d | 13.38d |  |  |  | 6h |
| 131 | 1.4.3.2.2.1 | A esquiadores | 6h | 2014-09-12 | 2014-09-14 |  | 2014-09-20 | 2014-09-23 | 6h | 14d |  | finish no earlier than 2014-09-11 | Joaquin O Ibar [50%] | 3h |
| 132 | 1.4.3.2.2.2 | A rescatistas | 6h | 2014-09-12 | 2014-09-14 |  | 2014-09-24 | 2014-09-30 | 4h | 13.38d |  | finish no earlier than 2014-09-14 | Joaquin O Ibar [50%] | 3h |
| 133 | 1.4.3.2.3 | Recepción de alertas | 10h | 2014-09-14 | 2014-09-18 |  | 2014-09-13 | 2014-09-21 | 8h | 10d |  | finish no earlier than 2014-09-14 | Lucas Sagaria | 10h |
| 134 | 1.4.3.2.4 | **Envío de alertas multicanal** | 4.88d | 2014-09-15 | 2014-09-19 |  | 2014-09-06 | 2014-09-09 | 3.25d | 8.38d |  |  |  | 10h |
| 135 | 1.4.3.2.4.1 | A un grupo determinado | 10h | 2014-09-15 | 2014-09-19 |  | 2014-09-06 | 2014-09-08 | 6h | 8.38d |  | finish no earlier than 2014-09-19 | Joaquin O Ibar [50%] | 5h |
| 136 | 1.4.3.2.4.2 | A todos | 10h | 2014-09-15 | 2014-09-19 |  | 2014-09-09 | 2014-09-09 | 2h | 8.38d |  | finish no earlier than 2014-09-19 | Joaquin O Ibar [50%] | 5h |
| 137 | 1.4.3.3 | Ejecución de casos de pruebas | 8h | 2014-09-20 | 2014-09-23 | 128 | 2014-09-10 | 2014-09-16 | 14h | 17.38d |  | finish no earlier than 2014-09-23 | Joaquin O Ibar; Lucas Sagaria | 16h |
| 138 | 1.4.3.4 | **Informe de ejecución de pruebas** | 12.25d | 2014-09-20 | 2014-10-02 | 128 | 2014-09-17 | 2014-09-28 | 11.25d | 9d |  |  |  | 20.5h |
| 139 | 1.4.3.4.1 | Elaboración del documento | 8h | 2014-09-20 | 2014-09-23 |  | 2014-09-17 | 2014-09-18 | 4h | 8.38d | 0.12d | finish no earlier than 2014-09-23 | Iván Franco | 8h |
| 140 | 1.4.3.4.2 | Revisión de incidentes de testing | 10h | 2014-09-24 | 2014-09-28 | 139 | 2014-09-20 | 2014-09-20 | 2h | 8.38d | 0d | finish no earlier than 2014-09-28 | Joaquin O Ibar [50%] | 5h |
| 141 | 1.4.3.4.3 | Corrección de incidentes de testing | 8h | 2014-09-29 | 2014-10-02 | 140 | 2014-09-21 | 2014-09-28 | 16h | 9.12d |  | start no earlier than 2014-09-29 | Gonzalo García Córdoba [25%]; Ignacio J. Abad [25%]; Iván Franco [25%]; Joaquin O Ibar [25%]; Lucas Sagaria [25%] | 7.5h |
| 142 | 1.4.4 | **Construcción del cuarto prototipo** | 20.88d | 2014-10-03 | 2014-10-23 | 120 | 2014-10-14 | 2014-11-13 | 30.25d | 5.38d |  |  |  | 72h |
| 143 | 1.4.4.1 | **Módulo Alertas** | 3.88d | 2014-10-03 | 2014-10-06 |  | 2014-10-26 | 2014-11-09 | 14.25d | 8.38d | 3.12d |  |  | 8h |
| 144 | 1.4.4.1.1 | Incorporación de audio en las alertas | 8h | 2014-10-03 | 2014-10-06 |  |  |  |  | 8.38d |  | finish no earlier than 2014-10-06 | Iván Franco | 8h |
| 145 | 1.4.4.2 | **Módulo Mi Perfil** | 6.25d | 2014-10-03 | 2014-10-09 |  | 2014-10-19 | 2014-11-03 | 15.25d | 6d | 0.75d |  |  | 20h |
| 146 | 1.4.4.2.1 | Conectar con periférico | 8h | 2014-10-03 | 2014-10-06 |  | 2014-10-19 | 2014-11-01 | 28h | 8.38d |  | finish no earlier than 2014-10-06 | Ignacio J. Abad; Lucas Sagaria | 16h |
| 147 | 1.4.4.2.2 | Botón de emergencia | 4h | 2014-10-08 | 2014-10-09 |  | 2014-11-02 | 2014-11-03 | 4h | 6d |  | finish no earlier than 2014-10-03 | Iván Franco | 4h |
| 148 | 1.4.4.3 | **Compartir en redes sociales** | 1.88d | 2014-10-08 | 2014-10-09 |  | 2014-10-14 | 2014-10-18 | 4.25d | 5.38d | 0.12d |  |  | 4h |
| 149 | 1.4.4.3.1 | Estadísticas | 2h | 2014-10-08 | 2014-10-08 |  | 2014-10-14 | 2014-10-16 | 6h | 6.38d |  | finish no earlier than 2014-10-08 | Gonzalo García Córdoba | 2h |
| 150 | 1.4.4.3.2 | Ubicación actual | 2h | 2014-10-09 | 2014-10-09 |  | 2014-10-17 | 2014-10-18 | 4h | 5.38d |  | finish no earlier than 2014-10-09 | Gonzalo García Córdoba | 2h |
| 151 | 1.4.4.4 | Ejecución de casos de pruebas | 12h | 2014-10-10 | 2014-10-15 | 143, 145, 148 | 2014-10-19 | 2014-10-25 | 14h | 13.38d |  | finish no earlier than 2014-10-15 | Lucas Sagaria | 12h |

| ID | WBS | Task | Duration | Start | Finish | Predecessors | Baseline start | Baseline finish | Baseline duration | Total slack | Free slack | Constraint | Resources | Work |
| --- | --- | --- | --- | --- | --- | --- | --- | --- | --- | --- | --- | --- | --- | --- |
| 152 | 1.4.4.5 | **Informe de ejecución de pruebas** | 13.88d | 2014-10-10 | 2014-10-23 |  | 2014-10-26 | 2014-11-13 | 18.25d | 5.38d |  |  |  | 28h |
| 153 | 1.4.4.5.1 | Elaboración del documento | 12h | 2014-10-10 | 2014-10-15 | 143, 145, 148 | 2014-10-26 | 2014-10-27 | 4h | 5.38d | 0.12d | finish no earlier than 2014-10-15 | Iván Franco | 12h |
| 154 | 1.4.4.5.2 | Revisión de incidentes de testing | 8h | 2014-10-16 | 2014-10-19 | 153 |  |  |  | 6d | 0.75d | start no earlier than 2014-10-16 | Gonzalo García Córdoba | 8h |
| 155 | 1.4.4.5.3 | Corrección de incidentes de testing | 8h | 2014-10-20 | 2014-10-23 | 154 |  |  |  | 5.38d |  | finish no earlier than 2014-10-23 | Joaquin O Ibar | 8h |
| 156 | 1.5 | **Documentación de testing** | 10.88d | 2014-06-27 | 2014-07-07 |  | 2014-06-08 | 2014-06-13 | 5d | 135.38d |  |  |  | 7.5h |
| 157 | 1.5.1 | **Documento de Casos de Prueba** | 10.88d | 2014-06-27 | 2014-07-07 |  | 2014-06-08 | 2014-06-13 | 5d | 135.38d |  |  |  | 7.5h |
| 158 | 1.5.1.1 | Elaboración del documento | 8h | 2014-06-27 | 2014-06-30 | 35 | 2014-06-08 | 2014-06-11 | 6h | 135.38d | 0.12d | finish no earlier than 2014-06-30 | Ignacio J. Abad [25%] | 2h |
| 159 | 1.5.1.2 | Revisión del documento | 6h | 2014-07-01 | 2014-07-03 | 158 | 2014-06-11 | 2014-06-12 | 2h | 135.38d | 0.12d | finish no earlier than 2014-07-03 | Lucas Sagaria [25%] | 1.5h |
| 160 | 1.5.1.3 | Validación y correcciones | 8h | 2014-07-04 | 2014-07-07 | 159 | 2014-06-12 | 2014-06-13 | 2h | 135.38d |  | finish no earlier than 2014-07-07 | Gonzalo García Córdoba [50%] | 4h |
| 161 | 1.6 | **Entrega del producto final** | 10.88d | 2014-10-30 | 2014-11-09 | 82 | 2014-11-14 | 2014-11-20 | 6.25d | 0d |  |  |  | 30h |
| 162 | 1.6.1 | **Manual de usuario** | 10.88d | 2014-10-30 | 2014-11-09 |  | 2014-11-14 | 2014-11-20 | 6.25d | 0d |  |  |  | 15h |
| 163 | 1.6.1.1 | Elaboración del documento | 8h | 2014-10-30 | 2014-11-02 |  | 2014-11-14 | 2014-11-17 | 8h | 0d |  | finish no earlier than 2014-11-02 | Ignacio J. Abad | 8h |
| 164 | 1.6.1.2 | Revisión del documento | 6h | 2014-11-03 | 2014-11-05 | 163 | 2014-11-18 | 2014-11-18 | 2h | 0d |  | finish no earlier than 2014-11-05 | Joaquin O Ibar [50%] | 3h |
| 165 | 1.6.1.3 | Validación y correcciones | 8h | 2014-11-06 | 2014-11-09 | 164 | 2014-11-19 | 2014-11-20 | 4h | 0d |  | finish no earlier than 2014-11-09 | Gonzalo García Córdoba [50%] | 4h |
| 166 | 1.6.2 | **Manual de instalación.** | 10.25d | 2014-10-30 | 2014-11-09 |  | 2014-11-14 | 2014-11-18 | 4.25d | 0d |  |  |  | 15h |
| 167 | 1.6.2.1 | Elaboración del documento | 8h | 2014-10-30 | 2014-11-02 |  | 2014-11-14 | 2014-11-16 | 6h | 0d |  | finish no earlier than 2014-11-02 | Lucas Sagaria | 8h |
| 168 | 1.6.2.2 | Revisión del documento | 6h | 2014-11-03 | 2014-11-05 | 167 | 2014-11-17 | 2014-11-17 | 2h | 0d |  | start no earlier than 2014-11-03 | Joaquin O Ibar [50%] | 3h |
| 169 | 1.6.2.3 | Validación y correcciones | 8h | 2014-11-06 | 2014-11-09 | 168 | 2014-11-18 | 2014-11-18 | 2h | 0d |  | start no earlier than 2014-11-06 | Gonzalo García Córdoba [50%] | 4h |
| 170 | 1.7 | **Entregables de Marketing** | 41.88d | 2014-07-25 | 2014-09-04 |  | 2014-06-04 | 2014-10-05 | 123.25d | 76.38d |  |  |  | 32.75h |
| 171 | 1.7.1 | **Poster del Proyecto** | 13.88d | 2014-07-25 | 2014-08-07 |  | 2014-06-04 | 2014-06-15 | 11d | 104.38d |  |  |  | 12.5h |
| 172 | 1.7.1.1 | Elaboración del entregable | 14h | 2014-07-25 | 2014-07-31 |  | 2014-06-04 | 2014-06-08 | 8h | 105d | 0.75d | start no earlier than 2014-07-25 | Gonzalo García Córdoba [25%] | 3.5h |
| 173 | 1.7.1.2 | Revisión del entregable | 6h | 2014-08-01 | 2014-08-03 | 172 | 2014-06-10 | 2014-06-11 | 2h | 104.38d | 0.12d | finish no earlier than 2014-08-03 | Iván Franco [50%] | 3h |
| 174 | 1.7.1.3 | Validación y ajustes | 8h | 2014-08-04 | 2014-08-07 | 173 | 2014-06-13 | 2014-06-15 | 4h | 104.38d |  | finish no earlier than 2014-08-07 | Ignacio J. Abad [25%]; Joaquin O Ibar [25%]; Lucas Sagaria [25%] | 6h |
| 175 | 1.7.2 | **Presentación Comercial del Proyecto** | 7.88d | 2014-08-28 | 2014-09-04 |  | 2014-06-04 | 2014-10-05 | 123.25d | 76.38d |  |  |  | 20.25h |
| 176 | 1.7.2.1 | Gestión del Catering | 1h | 2014-08-28 | 2014-08-28 |  | 2014-06-04 | 2014-08-31 | 4h | 83.38d |  | finish no earlier than 2014-08-28 | Lucas Sagaria [25%] | 0.25h |
| 177 | 1.7.2.2 | Elaboración de la presentación | 8h | 2014-08-28 | 2014-08-31 |  | 2014-09-15 | 2014-09-29 | 6h | 77d | 0.75d | start no earlier than 2014-08-28 | Joaquin O Ibar [50%] | 4h |
| 178 | 1.7.2.3 | Revisión de la presentación | 6h | 2014-09-01 | 2014-09-03 | 177 | 2014-10-01 | 2014-10-04 | 8h | 77d | 0.75d | start no earlier than 2014-09-01 | Lucas Sagaria [50%]; Joaquin O Ibar [50%] | 6h |
| 179 | 1.7.2.4 | Delivery de la presentación | 2h | 2014-09-04 | 2014-09-04 | 178 | 2014-10-05 | 2014-10-05 | 2h | 76.38d |  | finish no earlier than 2014-09-04 | Iván Franco; Ignacio J. Abad; Joaquin O Ibar; Gonzalo García Córdoba; Lucas Sagaria | 10h |

| ID | WBS | Task | Duration | Start | Finish | Predecessors | Baseline start | Baseline finish | Baseline duration | Total slack | Constraint | Resources | Work |
| --- | --- | --- | --- | --- | --- | --- | --- | --- | --- | --- | --- | --- | --- |
| 180 | 1.8 | **Cierre del proyecto** | 10.88d | 2014-11-10 | 2014-11-20 |  | 2014-11-21 | 2014-11-26 | 42h | 0d |  |  | 22h |
| 181 | 1.8.1 | **Documento de cierre del proyecto** | 10.88d | 2014-11-10 | 2014-11-20 |  | 2014-11-21 | 2014-11-26 | 5.25d | 0d |  |  | 11h |
| 182 | 1.8.1.1 | Elaboración del documento | 6h | 2014-11-10 | 2014-11-12 | 161 | 2014-11-21 | 2014-11-23 | 6h | 0d | start no earlier than 2014-11-10 | Gonzalo García Córdoba [50%] | 3h |
| 183 | 1.8.1.2 | Revisión del documento | 8h | 2014-11-13 | 2014-11-16 | 182 | 2014-11-24 | 2014-11-25 | 4h | 0d | start no earlier than 2014-11-13 | Ignacio J. Abad [50%] | 4h |
| 184 | 1.8.1.3 | Validación y correcciones | 8h | 2014-11-17 | 2014-11-20 | 183 | 2014-11-26 | 2014-11-26 | 2h | 0d | finish no earlier than 2014-11-20 | Iván Franco [50%] | 4h |
| 185 | 1.8.2 | **Documento de lecciones aprendidas** | 10.88d | 2014-11-10 | 2014-11-20 |  | 2014-11-21 | 2014-11-26 | 5.25d | 0d |  |  | 11h |
| 186 | 1.8.2.1 | Elaboración del documento | 6h | 2014-11-10 | 2014-11-12 | 161 | 2014-11-21 | 2014-11-23 | 6h | 0d | finish no earlier than 2014-11-12 | Joaquin O Ibar [50%] | 3h |
| 187 | 1.8.2.2 | Revisión del documento | 8h | 2014-11-13 | 2014-11-16 | 186 | 2014-11-24 | 2014-11-25 | 4h | 0d | finish no earlier than 2014-11-16 | Lucas Sagaria [50%] | 4h |
| 188 | 1.8.2.3 | Validación y correcciones | 8h | 2014-11-17 | 2014-11-20 | 187 | 2014-11-26 | 2014-11-26 | 2h | 0d | finish no earlier than 2014-11-20 | Iván Franco [50%] | 4h |
